# finance

Schedule from MS Project, 2007-01-01 to 2007-04-11.
This template outlines the steps needed to implement a finance and accounting system. It assumes an existing system or process is in place and a new system will be replacing it. It also assumes that the new application software system has already been chosen.

## Calendars

- Standard: Mon-Fri 08:00-12:00, 13:00-17:00; Sat-Sun off.

## Resources

| Resource |
| --- |
| Executive Management |
| Information Systems |
| Accounting |
| Legal |
| Purchasing |

## Schedule

| ID | WBS | Task | Type | Duration | Start | Finish | Predecessors | Total slack | Free slack | Resources | Work |
| --- | --- | --- | --- | --- | --- | --- | --- | --- | --- | --- | --- |
| 1 | 1 | New Finance and Accounting System chosen | milestone | 0d | 2007-01-01 | 2007-01-01 |  | 0d |  |  |  |
| 2 | 2 | **Implementation Requirements** |  | 18.33d? | 2007-01-01 | 2007-01-25 |  | 0d |  |  | 234.64h |
| 3 | 2.1 | **Package Architecture Validation** |  | 5d? | 2007-01-01 | 2007-01-05 |  | 0d |  |  | 56h |
| 4 | 2.1.1 | Review technical architecture |  | 1d? | 2007-01-01 | 2007-01-01 | 1 | 0d |  | Information Systems | 8h |
| 5 | 2.1.2 | Determine package implementation environment |  | 1d? | 2007-01-02 | 2007-01-02 | 4 | 0d |  | Information Systems | 8h |
| 6 | 2.1.3 | Provide initial training |  | 1d? | 2007-01-02 | 2007-01-02 | 4 | 70.83d |  | Information Systems | 8h |
| 7 | 2.1.4 | Install the package |  | 1d? | 2007-01-03 | 2007-01-03 | 5 | 0d |  | Information Systems | 8h |
| 8 | 2.1.5 | Estimate usage volumes and scaling options |  | 1d? | 2007-01-04 | 2007-01-04 | 7 | 68.83d |  | Information Systems | 8h |
| 9 | 2.1.6 | Ensure that installation is architected for high availability |  | 1d? | 2007-01-04 | 2007-01-04 | 7 | 67.83d | 0d | Information Systems | 8h |
| 10 | 2.1.7 | Review and baseline technical architecture model |  | 1d? | 2007-01-05 | 2007-01-05 | 9 | 67.83d | 0d | Information Systems | 8h |
| 11 | 2.1.8 | Package architecture validation complete | milestone | 0d | 2007-01-05 | 2007-01-05 | 10 | 67.83d |  |  |  |
| 12 | 2.2 | **Package and Requirements Review** |  | 2d? | 2007-01-04 | 2007-01-05 |  | 0d |  |  | 32h |
| 13 | 2.2.1 | Explore the package |  | 0.5d? | 2007-01-04 | 2007-01-04 | 7 | 0d |  | Information Systems; Accounting | 8h |
| 14 | 2.2.2 | Validate business requirements model |  | 0.5d? | 2007-01-04 | 2007-01-04 | 13 | 0d |  | Information Systems; Accounting | 8h |
| 15 | 2.2.3 | Map business requirements to package |  | 0.5d? | 2007-01-05 | 2007-01-05 | 14 | 0d |  | Information Systems; Accounting | 8h |
| 16 | 2.2.4 | Compile package gap document and identify gap solutions |  | 0.5d? | 2007-01-05 | 2007-01-05 | 15 | 0d |  | Information Systems; Accounting | 8h |
| 17 | 2.2.5 | Package and requirements review complete | milestone | 0d | 2007-01-05 | 2007-01-05 | 16 | 0d |  |  |  |
| 18 | 2.3 | **Implementation Options** |  | 5d? | 2007-01-08 | 2007-01-12 |  | 0d |  |  | 76h |
| 19 | 2.3.1 | Identify business process options |  | 0.5d? | 2007-01-08 | 2007-01-08 | 17 | 0d |  | Information Systems; Accounting | 8h |
| 20 | 2.3.2 | Evaluate data migration strategies |  | 1d? | 2007-01-08 | 2007-01-09 | 19 | 0d |  | Information Systems | 8h |
| 21 | 2.3.3 | Evaluate deployment approach |  | 1d? | 2007-01-08 | 2007-01-09 | 19 | 0d |  | Information Systems | 8h |
| 22 | 2.3.4 | Evaluate systems interfaces |  | 1d? | 2007-01-08 | 2007-01-09 | 19 | 0d |  | Information Systems | 8h |
| 23 | 2.3.5 | Evaluate delivery increment options |  | 1d? | 2007-01-08 | 2007-01-09 | 19 | 0d |  | Information Systems | 8h |
| 24 | 2.3.6 | Document implementation options |  | 1d? | 2007-01-09 | 2007-01-10 | 19, 20, 21, 22, 23 | 0d |  | Information Systems | 8h |
| 25 | 2.3.7 | Select implementation option |  | 1d? | 2007-01-10 | 2007-01-11 | 24 | 0d |  | Information Systems | 8h |
| 26 | 2.3.8 | Develop test and user acceptance plans |  | 0.5d? | 2007-01-11 | 2007-01-11 | 25 | 0d |  | Information Systems; Accounting | 8h |
| 27 | 2.3.9 | Obtain signoff of business process option recommendation |  | 1d? | 2007-01-12 | 2007-01-12 | 26 | 0d |  | Executive Management; Information Systems; Accounting | 12h |
| 28 | 2.3.10 | Implementation options complete | milestone | 0d | 2007-01-12 | 2007-01-12 | 27 | 0d |  |  |  |

| ID | WBS | Task | Type | Duration | Start | Finish | Predecessors | Total slack | Free slack | Resources | Work |
| --- | --- | --- | --- | --- | --- | --- | --- | --- | --- | --- | --- |
| 29 | 2.4 | **Package Business Increment Design** |  | 5d? | 2007-01-15 | 2007-01-19 |  | 0d |  |  | 40h |
| 30 | 2.4.1 | Define implementation increments |  | 1d? | 2007-01-15 | 2007-01-15 | 28 | 0d |  | Information Systems | 8h |
| 31 | 2.4.2 | Define increment acceptance criteria |  | 1d? | 2007-01-16 | 2007-01-16 | 30 | 0d |  | Information Systems | 8h |
| 32 | 2.4.3 | Define training approach and plan |  | 1d? | 2007-01-17 | 2007-01-17 | 31 | 0d |  | Information Systems | 8h |
| 33 | 2.4.4 | Compile delivery increments plan |  | 1d? | 2007-01-18 | 2007-01-18 | 32 | 0d |  | Information Systems | 8h |
| 34 | 2.4.5 | Review delivery increments plan |  | 1d? | 2007-01-19 | 2007-01-19 | 33 | 0d |  | Accounting | 8h |
| 35 | 2.4.6 | Business implementation design complete | milestone | 0d | 2007-01-19 | 2007-01-19 | 34 | 0d |  |  |  |
| 36 | 2.5 | **Finalize Requirements Phase** |  | 3.33d? | 2007-01-22 | 2007-01-25 |  | 0d |  |  | 30.64h |
| 37 | 2.5.1 | Develop requirements traceability matrix |  | 1d? | 2007-01-22 | 2007-01-22 | 35 | 0d |  | Information Systems | 8h |
| 38 | 2.5.2 | Baseline project/deliverables |  | 1d? | 2007-01-23 | 2007-01-23 | 37 | 0d |  | Information Systems | 8h |
| 39 | 2.5.3 | Develop schedule for next stage |  | 1d? | 2007-01-24 | 2007-01-24 | 38 | 0d |  | Information Systems | 8h |
| 40 | 2.5.4 | Review project status with project board |  | 0.33d? | 2007-01-25 | 2007-01-25 | 39 | 0d |  | Executive Management; Information Systems; Accounting | 6.64h |
| 41 | 2.6 | Requirements phase complete | milestone | 0d | 2007-01-25 | 2007-01-25 | 40 | 0d |  |  |  |
| 42 | 3 | **Package Integration Design** |  | 13d? | 2007-01-25 | 2007-02-13 |  | 0d |  |  | 190.67h |
| 43 | 3.1 | **Package Iteration Planning** |  | 3d? | 2007-01-25 | 2007-01-30 |  | 0d |  |  | 32h |
| 44 | 3.1.1 | Conduct user and team training |  | 1d? | 2007-01-25 | 2007-01-26 | 41 | 0d |  | Information Systems | 8h |
| 45 | 3.1.2 | Define iterations |  | 1d? | 2007-01-26 | 2007-01-29 | 44 | 0d |  | Information Systems | 8h |
| 46 | 3.1.3 | Define test approach |  | 1d? | 2007-01-25 | 2007-01-26 | 44SS | 1d |  | Information Systems | 8h |
| 47 | 3.1.4 | Review and baseline iteration plan |  | 1d? | 2007-01-29 | 2007-01-30 | 46, 45 | 0d |  | Information Systems | 8h |
| 48 | 3.2 | **Package Implementation Prototyping** |  | 3.5d? | 2007-01-26 | 2007-01-31 |  | 49d |  |  | 48h |
| 49 | 3.2.1 | Develop scenarios |  | 1d? | 2007-01-26 | 2007-01-29 | 44 | 49d | 0d | Information Systems | 8h |
| 50 | 3.2.2 | Map scenarios to package transactions |  | 1d? | 2007-01-26 | 2007-01-29 | 49SS+5% | 52d |  | Information Systems | 8h |
| 51 | 3.2.3 | Define the scenario steps |  | 1d? | 2007-01-26 | 2007-01-29 | 49SS+5% | 51.25d | 0d | Information Systems | 8h |
| 52 | 3.2.4 | Specify and prototype reports |  | 1d? | 2007-01-29 | 2007-01-30 | 51SS+7.5% | 51.25d |  | Information Systems | 8h |
| 53 | 3.2.5 | Specify external interfaces |  | 1d? | 2007-01-26 | 2007-01-29 | 49SS+5% | 49d | 0d | Information Systems | 8h |
| 54 | 3.2.6 | Build package prototype |  | 1d? | 2007-01-29 | 2007-01-30 | 53 | 49d | 0d | Information Systems | 8h |
| 55 | 3.2.7 | Exercise/review package prototype |  | 1d? | 2007-01-30 | 2007-01-31 | 54 | 49d | 0d |  |  |

Notes:
- 30: This may require multiple teams representing different areas that may be implemented in different increments.
- 33: Compile the plans developed by the (potentially) different teams

| ID | WBS | Task | Type | Duration | Start | Finish | Predecessors | Total slack | Free slack | Resources | Work |
| --- | --- | --- | --- | --- | --- | --- | --- | --- | --- | --- | --- |
| 56 | 3.3 | **Package Iteration Consolidation** |  | 1d? | 2007-01-31 | 2007-02-01 |  | 49d |  |  | 16h |
| 57 | 3.3.1 | Design systems and integration test cases |  | 0.5d? | 2007-01-31 | 2007-02-01 | 55 | 49d | 0d | Information Systems; Accounting | 8h |
| 58 | 3.3.2 | Confirm scope of future iterations |  | 0.5d? | 2007-02-01 | 2007-02-01 | 57 | 49d |  | Information Systems; Accounting | 8h |
| 59 | 3.4 | **Data Migration Design** |  | 6d? | 2007-01-30 | 2007-02-07 |  | 0d |  |  | 61.33h |
| 60 | 3.4.1 | Review data acquisition strategy |  | 1d? | 2007-01-30 | 2007-01-31 | 47 | 0d |  | Information Systems | 8h |
| 61 | 3.4.2 | Define data migration sources |  | 1d? | 2007-01-31 | 2007-02-01 | 60 | 0d |  | Information Systems | 8h |
| 62 | 3.4.3 | Define data migration rules and logic |  | 1d? | 2007-02-01 | 2007-02-02 | 61 | 0d |  | Information Systems | 8h |
| 63 | 3.4.4 | Perform data cleanup |  | 1d? | 2007-02-01 | 2007-02-02 | 61 | 48.5d |  | Information Systems | 8h |
| 64 | 3.4.5 | Design data migration transactions |  | 1d? | 2007-02-02 | 2007-02-05 | 62, 61 | 47.5d |  | Information Systems | 8h |
| 65 | 3.4.6 | Determine data migration procedures and controls |  | 1d? | 2007-02-02 | 2007-02-05 | 62 | 0d |  | Information Systems | 8h |
| 66 | 3.4.7 | Review and baseline conversion design |  | 1d? | 2007-02-05 | 2007-02-06 | 65 | 0d |  | Information Systems | 8h |
| 67 | 3.4.8 | Obtain signoff of conversion design |  | 1d? | 2007-02-06 | 2007-02-07 | 66 | 0d |  | Information Systems [50%]; Accounting [50%] | 5.33h |
| 68 | 3.5 | **Finalize Integration Design Phase** |  | 4d? | 2007-02-07 | 2007-02-13 |  | 0d |  |  | 33.33h |
| 69 | 3.5.1 | Develop requirements traceability matrix |  | 1d? | 2007-02-07 | 2007-02-08 | 67 | 0d |  | Information Systems | 8h |
| 70 | 3.5.2 | Baseline project/deliverables |  | 1d? | 2007-02-08 | 2007-02-09 | 69 | 0d |  | Information Systems | 8h |
| 71 | 3.5.3 | Develop schedule for next stage |  | 1d? | 2007-02-09 | 2007-02-12 | 70 | 0d |  | Information Systems [50%]; Accounting [50%] | 5.33h |
| 72 | 3.5.4 | Review project status with project board |  | 1d? | 2007-02-12 | 2007-02-13 | 71 | 0d |  | Executive Management; Information Systems; Accounting | 12h |
| 73 | 3.6 | Package integration design complete | milestone | 0d | 2007-02-13 | 2007-02-13 | 72 | 0d |  |  |  |
| 74 | 4 | **Package Integration** |  | 24.5d? | 2007-02-13 | 2007-03-19 |  | 0d |  |  | 312h |
| 75 | 4.1 | **Build Iteration Planning** |  | 3d? | 2007-02-13 | 2007-02-16 |  | 0d |  |  | 32h |
| 76 | 4.1.1 | Confirm technical architecture |  | 1d? | 2007-02-13 | 2007-02-14 | 73 | 0d |  | Information Systems | 8h |
| 77 | 4.1.2 | Define iterations and builds |  | 1d? | 2007-02-14 | 2007-02-15 | 76 | 0d |  | Information Systems | 8h |
| 78 | 4.1.3 | Refine test cases |  | 1d? | 2007-02-15 | 2007-02-16 | 77 | 0d |  | Information Systems; Accounting | 16h |
| 79 | 4.2 | **Integration Build** |  | 4.5d? | 2007-02-16 | 2007-02-22 |  | 0d |  |  | 56h |
| 80 | 4.2.1 | Build reports |  | 1d? | 2007-02-16 | 2007-02-19 | 78 | 0d |  | Information Systems | 8h |
| 81 | 4.2.2 | Design and build migration components |  | 1d? | 2007-02-19 | 2007-02-20 | 80 | 0d |  | Information Systems | 8h |
| 82 | 4.2.3 | Design and build external interfaces |  | 1d? | 2007-02-20 | 2007-02-21 | 81 | 35.5d |  | Information Systems | 8h |
| 83 | 4.2.4 | Optimize performance |  | 1d? | 2007-02-20 | 2007-02-21 | 81 | 35.5d |  | Information Systems | 8h |
| 84 | 4.2.5 | Complete unit/integration testing |  | 1d? | 2007-02-19 | 2007-02-20 | 81SS+5% | 0d |  | Information Systems | 8h |
| 85 | 4.2.6 | Review and baseline build |  | 1d? | 2007-02-20 | 2007-02-21 | 84 | 0d |  | Information Systems | 8h |
| 86 | 4.2.7 | Deliver build for testing |  | 1d? | 2007-02-21 | 2007-02-22 | 85 | 0d |  | Information Systems | 8h |

| ID | WBS | Task | Type | Duration | Start | Finish | Predecessors | Total slack | Resources | Work |
| --- | --- | --- | --- | --- | --- | --- | --- | --- | --- | --- |
| 87 | 4.3 | **System Test Design and Development** |  | 2d? | 2007-02-22 | 2007-02-26 |  | 0d |  | 32h |
| 88 | 4.3.1 | Define test scripts |  | 1d? | 2007-02-22 | 2007-02-23 | 86 | 0d | Information Systems | 8h |
| 89 | 4.3.2 | Review test case/requirement coverage |  | 1d? | 2007-02-23 | 2007-02-26 | 88 | 32d | Information Systems | 8h |
| 90 | 4.3.3 | Develop automated scripts |  | 1d? | 2007-02-22 | 2007-02-23 | 88SS | 33d | Information Systems | 8h |
| 91 | 4.3.4 | Establish external test data sets |  | 1d? | 2007-02-23 | 2007-02-26 | 88 | 0d | Information Systems | 8h |
| 92 | 4.4 | **System Test Execution** |  | 3d? | 2007-02-26 | 2007-03-01 |  | 0d |  | 24h |
| 93 | 4.4.1 | Execute tests and log results |  | 1d? | 2007-02-26 | 2007-02-27 | 91 | 0d | Information Systems | 8h |
| 94 | 4.4.2 | Investigate unexpected results |  | 1d? | 2007-02-27 | 2007-02-28 | 93 | 0d | Information Systems | 8h |
| 95 | 4.4.3 | Estimate, prioritize, and schedule testing changes |  | 1d? | 2007-02-28 | 2007-03-01 | 94 | 0d | Information Systems | 8h |
| 96 | 4.5 | **Iteration Review** |  | 2d? | 2007-03-01 | 2007-03-05 |  | 0d |  | 32h |
| 97 | 4.5.1 | Review system test results for current iteration |  | 1d? | 2007-03-01 | 2007-03-02 | 95 | 0d | Information Systems; Accounting | 16h |
| 98 | 4.5.2 | Confirm Scope of Future Iterations |  | 1d? | 2007-03-02 | 2007-03-05 | 97 | 0d | Information Systems; Accounting | 16h |
| 99 | 4.6 | **Acceptance Testing** |  | 6d? | 2007-03-05 | 2007-03-13 |  | 0d |  | 88h |
| 100 | 4.6.1 | Set up acceptance test environment |  | 1d? | 2007-03-05 | 2007-03-06 | 98 | 0d | Information Systems | 8h |
| 101 | 4.6.2 | Create acceptance test scripts |  | 1d? | 2007-03-06 | 2007-03-07 | 100 | 0d | Information Systems; Accounting | 16h |
| 102 | 4.6.3 | Execute acceptance tests and log results |  | 1d? | 2007-03-07 | 2007-03-08 | 101 | 0d | Information Systems; Accounting | 16h |
| 103 | 4.6.4 | Update system based on acceptance test results |  | 1d? | 2007-03-08 | 2007-03-09 | 102 | 0d | Information Systems; Accounting | 16h |
| 104 | 4.6.5 | Re-execute acceptance tests and log results |  | 1d? | 2007-03-09 | 2007-03-12 | 103 | 0d | Information Systems; Accounting | 16h |
| 105 | 4.6.6 | Obtain signoff of system |  | 1d? | 2007-03-12 | 2007-03-13 | 104 | 0d | Information Systems; Accounting | 16h |
| 106 | 4.7 | Package implementation complete | milestone | 0d | 2007-03-13 | 2007-03-13 | 105 | 0d |  |  |
| 107 | 4.8 | **Finalize Package Integration Phase** |  | 4d? | 2007-03-13 | 2007-03-19 |  | 0d |  | 48h |
| 108 | 4.8.1 | Develop requirements traceability matrix |  | 1d? | 2007-03-13 | 2007-03-14 | 106 | 0d | Information Systems; Accounting | 16h |
| 109 | 4.8.2 | Baseline project/deliverables |  | 1d? | 2007-03-14 | 2007-03-15 | 108 | 0d | Information Systems; Accounting | 16h |
| 110 | 4.8.3 | Develop schedule for next stage |  | 1d? | 2007-03-15 | 2007-03-16 | 109 | 0d | Information Systems; Accounting | 16h |
| 111 | 4.8.4 | Review project status with project board |  | 1d? | 2007-03-16 | 2007-03-19 | 110 | 0d |  |  |

| ID | WBS | Task | Type | Duration | Start | Finish | Predecessors | Total slack | Resources | Work |
| --- | --- | --- | --- | --- | --- | --- | --- | --- | --- | --- |
| 112 | 5 | **Package Deployment** |  | 17d? | 2007-03-19 | 2007-04-11 |  | 0d |  | 176h |
| 113 | 5.1 | **Education Development** |  | 4d? | 2007-03-19 | 2007-03-23 |  | 0d |  | 56h |
| 114 | 5.1.1 | Set up training environment |  | 1d? | 2007-03-19 | 2007-03-20 | 111 | 0d | Information Systems | 8h |
| 115 | 5.1.2 | Create application user guide |  | 1d? | 2007-03-20 | 2007-03-21 | 114 | 0d | Information Systems; Accounting | 16h |
| 116 | 5.1.3 | Create administrators guide |  | 1d? | 2007-03-21 | 2007-03-22 | 115 | 0d | Information Systems; Accounting | 16h |
| 117 | 5.1.4 | Develop training materials |  | 1d? | 2007-03-22 | 2007-03-23 | 116 | 0d | Information Systems; Accounting | 16h |
| 118 | 5.2 | **Package Deployment Preparation** |  | 6d? | 2007-03-23 | 2007-04-02 |  | 0d |  | 48h |
| 119 | 5.2.1 | Develop background scheduling processes |  | 1d? | 2007-03-23 | 2007-03-26 | 117 | 0d | Information Systems | 8h |
| 120 | 5.2.2 | Create production test scripts |  | 1d? | 2007-03-26 | 2007-03-27 | 119 | 0d | Information Systems | 8h |
| 121 | 5.2.3 | Review and compile technical implementation plan |  | 1d? | 2007-03-27 | 2007-03-28 | 119, 120 | 0d | Information Systems | 8h |
| 122 | 5.2.4 | Establish technical environment |  | 1d? | 2007-03-28 | 2007-03-29 | 121 | 0d | Information Systems | 8h |
| 123 | 5.2.5 | Conduct deployment briefings |  | 1d? | 2007-03-29 | 2007-03-30 | 122 | 0d | Information Systems | 8h |
| 124 | 5.2.6 | Conduct training |  | 1d? | 2007-03-30 | 2007-04-02 | 123 | 7d | Accounting | 8h |
| 125 | 5.2.7 | Complete process review |  | 1d? | 2007-03-30 | 2007-04-02 | 123 | 0d |  |  |
| 126 | 5.3 | **Installation and Handover** |  | 5d? | 2007-04-02 | 2007-04-09 |  | 0d |  | 40h |
| 127 | 5.3.1 | Install application software |  | 1d? | 2007-04-02 | 2007-04-03 | 125 | 0d | Information Systems | 8h |
| 128 | 5.3.2 | Convert static and acquire new data |  | 1d? | 2007-04-03 | 2007-04-04 | 127 | 0d | Information Systems | 8h |
| 129 | 5.3.3 | Convert dynamic data |  | 1d? | 2007-04-03 | 2007-04-04 | 127 | 0d | Information Systems | 8h |
| 130 | 5.3.4 | Perform production tests |  | 1d? | 2007-04-04 | 2007-04-05 | 128, 129 | 0d | Information Systems | 8h |
| 131 | 5.3.5 | Cut over to new application |  | 1d? | 2007-04-05 | 2007-04-06 | 130 | 0d | Information Systems | 8h |
| 132 | 5.3.6 | Create maintenance guide |  | 1d? | 2007-04-06 | 2007-04-09 | 131 | 0d |  |  |
| 133 | 5.4 | **Finalize Deployment Phase** |  | 2d? | 2007-04-09 | 2007-04-11 |  | 0d |  | 32h |
| 134 | 5.4.1 | Perform lessons learned meeting |  | 1d? | 2007-04-09 | 2007-04-10 | 132 | 0d | Information Systems; Accounting | 16h |
| 135 | 5.4.2 | Close project file |  | 1d? | 2007-04-10 | 2007-04-11 | 134 | 0d | Information Systems; Accounting | 16h |
| 136 | 5.5 | Package deployment complete | milestone | 0d | 2007-04-11 | 2007-04-11 | 135 | 0d |  |  |
| 137 | 6 | Project complete | milestone | 0d | 2007-04-11 | 2007-04-11 | 136 | 0d |  |  |
