# CNT491.1 Project

Schedule from MS Project, 2002-01-21 to 2002-05-27, costs in $.
NAIT

## Calendars

- Standard: Mon-Fri 08:00-12:00, 13:00-17:00; Sat-Sun off.

## Resources

| Resource | Group | Rate |
| --- | --- | --- |
| Development Team A | Dev | 135 |
| Development Team B | Dev | 135 |
| Quality Assurance | QA | 90 |
| Project Manager | Man | 80 |
| Review Board | Man | 250 |
| Project Planning | Plan | 150 |
| Development Team C | Dev | 135 |

## Schedule

| ID | Task | Type | Duration | Start | Finish | Predecessors | Total slack | Constraint | Resources | Work | Cost |
| --- | --- | --- | --- | --- | --- | --- | --- | --- | --- | --- | --- |
| 1 | Project Start | milestone | 0d | 2002-01-21 | 2002-01-21 |  | 0d | start no earlier than 2002-01-21 |  |  |  |
| 2 | Preliminary Investigation |  | 2d | 2002-01-21 | 2002-01-22 | 1 | 0d |  | Project Planning | 16h | 2,400 |
| 3 | Interviews |  | 3d | 2002-01-23 | 2002-01-25 | 2 | 0d |  | Project Planning | 24h | 3,600 |
| 4 | Compile Interview Results |  | 2d | 2002-01-28 | 2002-01-29 | 3 | 0d |  | Project Planning | 16h | 2,400 |
| 5 | Prepare Data Model |  | 3d | 2002-01-30 | 2002-02-01 | 4 | 0d |  | Project Planning | 24h | 3,600 |
| 6 | Prepare Object Model |  | 3.25d | 2002-02-01 | 2002-02-05 | 5 | 0d |  | Project Planning; Development Team A | 32h | 4,560 |
| 7 | Compile Analysis and Recommendations |  | 3d | 2002-02-06 | 2002-02-08 | 6 | 0d |  | Project Manager | 24h | 1,920 |
| 8 | Project Review and Acceptance |  | 1d | 2002-02-13 | 2002-02-13 | 7FS+2d | 0d |  | Project Manager; Review Board | 16h | 2,640 |
| 9 | Analysis Complete | milestone | 0d | 2002-02-13 | 2002-02-13 | 8 | 0d |  |  |  |  |
| 10 | Design Phase Start | milestone | 0d | 2002-02-18 | 2002-02-18 | 9FS+3d | 0d |  |  |  |  |
| 11 | Data Layer Design |  | 2d | 2002-02-18 | 2002-02-20 | 10 | 2.5d |  | Development Team A | 16h | 2,160 |
| 12 | Business Layer Design |  | 4d | 2002-02-18 | 2002-02-22 | 10 | 1d |  | Development Team B | 32h | 4,320 |
| 13 | User Interface Design |  | 5d | 2002-02-18 | 2002-02-22 | 10 | 0d |  | Development Team C | 40h | 5,400 |
| 14 | Prototyping |  | 6d | 2002-02-22 | 2002-02-28 | 11, 12, 13 | 0d |  | Development Team A; Development Team B | 96h | 12,960 |
| 15 | Design Review |  | 2d | 2002-03-05 | 2002-03-06 | 14FS+2d | 0d |  | Project Manager; Review Board | 32h | 5,280 |
| 16 | Design Modification |  | 6d | 2002-03-06 | 2002-03-12 | 15 | 0d |  | Development Team A; Development Team B | 96h | 12,960 |
| 17 | Acceptance Review |  | 1d | 2002-03-15 | 2002-03-15 | 16FS+2d | 0d |  | Project Manager; Review Board | 16h | 2,640 |
| 18 | Design Complete | milestone | 0d | 2002-03-15 | 2002-03-15 | 17 | 0d |  |  |  |  |
| 19 | Implementation Phase Start | milestone | 0d | 2002-03-21 | 2002-03-21 | 18FS+4d | 0d |  |  |  |  |
| 20 | Implement Data Layer |  | 6d | 2002-03-21 | 2002-03-27 | 19 | 0d |  | Development Team A [75%] | 36h | 4,860 |
| 21 | Implement Business Layer |  | 8d | 2002-03-21 | 2002-03-29 | 19 | 0d |  | Development Team B [75%] | 48h | 6,480 |
| 22 | Implement User Interface |  | 32d | 2002-03-21 | 2002-04-22 | 19 | 0d |  | Development Team C | 256h | 34,560 |
| 23 | Unit Testing |  | 15.54d | 2002-03-25 | 2002-05-01 | 20SS+2d, 21SS+2d, 22SS+2d | 0d |  | Development Team A [25%]; Development Team B [25%]; Quality Assurance; Development Team C [25%] | 79.33h | 9,166.22 |
| 24 | Integration |  | 3.33d | 2002-05-01 | 2002-05-03 | 23, 20, 21, 22 | 0d |  | Development Team A; Development Team B; Development Team C | 80h | 10,800 |
| 25 | Integration Review |  | 1d | 2002-05-07 | 2002-05-08 | 24FS+2d | 12.44d |  | Project Manager; Review Board | 16h | 2,640 |
| 26 | System Testing |  | 2.76d | 2002-05-03 | 2002-05-07 | 24SS+2d | 0d |  | Quality Assurance; Development Team A; Development Team B; Development Team C | 34.67h | 4,325.43 |
| 27 | Initial Qualitiy Assurance |  | 6d | 2002-05-07 | 2002-05-13 | 26 | 0d |  | Quality Assurance | 48h | 4,320 |
| 28 | Debugging |  | 5.33d | 2002-05-09 | 2002-05-15 | 27SS+2d | 0d |  | Development Team A; Development Team B; Development Team C | 128h | 17,280 |
| 29 | Final Quality Assurance |  | 2d | 2002-05-15 | 2002-05-16 | 28 | 0d |  | Quality Assurance | 16h | 1,440 |
| 30 | Acceptance Testing |  | 4.25d | 2002-05-16 | 2002-05-21 | 29SS+1d | 0d |  | Project Manager; Quality Assurance | 48h | 4,080 |
| 31 | Final Review |  | 2d | 2002-05-23 | 2002-05-27 | 30FS+2d | 0d |  | Project Manager; Review Board | 32h | 5,280 |
| 32 | Project Completion | milestone | 0d | 2002-05-27 | 2002-05-27 | 31 | 0d |  |  |  |  |

Notes:
- 8: Review board lags completion of analysis to account for setting up meeting and generating presentation materials.
- 15: Review board lags completion of design to account for setting up meeting and generating presentation materials.
- 17: Review board lags completion of design modifications to account for setting up meeting and generating presentation materials.
